# 信宜市人民医院信息化建设

How a schedule from a web Gantt chart changed from version to version. A marks actual dates.

## Version 1 (saved 2024-08-06)

| ID | WBS | Task | Duration | Start | Finish | Complete |
| --- | --- | --- | --- | --- | --- | --- |
| 2 | 1 | **医共体智慧急诊急救大平台项目实施计划** | 34d | 2024-07-29 | 2024-08-31 | 9% |
| 3 |  | 转诊系统平台的调整开发 | 16d | 2024-07-30 | 2024-08-14 | 5% |
| 4 |  | 预检分诊上线 | 21d | 2024-07-30 | 2024-08-19 | 30% |
| 5 |  | 统计看板、质控指标看板的配置 | 19d | 2024-08-05 | 2024-08-23 |  |
| 6 |  | 院内院外网络打通 | 1d | 2024-07-30 | 2024-07-30 |  |
| 7 |  | 设备采购及安装部署 | 10d | 2024-07-29 | 2024-08-07 | 10% |
| 8 |  | HIS接口对接 | 10d | 2024-07-30 | 2024-08-08 | 10% |
| 9 |  | 心电影像网络接口对接 | 5d | 2024-08-01 | 2024-08-05 | 10% |
| 10 |  | 120接口对接 | 15d | 2024-08-01 | 2024-08-15 | 5% |
| 11 |  | 2台急救车数字化改造 | 3d | 2024-08-19 | 2024-08-21 |  |
| 12 |  | 院内及急救车上医疗设备对接 | 5d | 2024-08-19 | 2024-08-23 |  |
| 13 |  | 系统配置及帐号授权开通 | 5d | 2024-08-08 | 2024-08-12 | 10% |
| 14 |  | 全业务流程测试 | 4d | 2024-08-23 | 2024-08-26 |  |
| 15 |  | 转诊转运培训：发文通知、线上培训 | 1d | 2024-08-27 | 2024-08-27 |  |
| 16 |  | 试点单位上线试运行 | 2d | 2024-08-28 | 2024-08-29 |  |
| 17 |  | 正式上线 | 1d | 2024-08-31 | 2024-08-31 |  |
| 18 | 2 | **数据基座建设** | 46d | 2024-07-16 | 2024-08-30 | 31% |
| 19 | 2.1 | **医共体驾驶舱** | 27d | 2024-07-25 | 2024-08-20 | 50% |
| 20 |  | 茂名市健康平台统计指标梳理 | 7d | 2024-07-25 | 2024-07-31 | 100% |
| 21 |  | 医共体急救指标梳理 | 7d | 2024-07-31 | 2024-08-06 | 100% |
| 22 |  | 医共体指标计算逻辑 | 9d | 2024-08-01 | 2024-08-09 | 70% |
| 23 |  | 医共体驾驶舱交互设计 | 7d | 2024-08-01 | 2024-08-07 | 60% |
| 24 |  | 医共体驾驶舱视觉设计 | 7d | 2024-08-02 | 2024-08-08 | 50% |
| 25 |  | 茂名市平台指标数据爬取 | 16d | 2024-08-02 | 2024-08-17 | 30% |
| 26 |  | 医共体驾驶舱界面开发 | 13d | 2024-08-08 | 2024-08-20 |  |
| 27 | 2.2 | **慢病档案建立** | 46d | 2024-07-16 | 2024-08-30 | 42% |
| 28 |  | 省基卫数据清洗 | 4d | 2024-07-16 | 2024-07-19 | 100% |
| 29 |  | 省基卫数据入库 | 9d | 2024-07-18 | 2024-07-26 | 100% |
| 30 |  | 基层医生档案录入 | 9d | 2024-07-22 | 2024-07-30 | 100% |
| 31 |  | 病案系统数据清洗 | 12d | 2024-07-29 | 2024-08-09 | 50% |
| 32 |  | 病案系统数据入库 | 10d | 2024-08-07 | 2024-08-16 |  |
| 33 |  | i信医慢病管理数据接入 | 30d | 2024-08-01 | 2024-08-30 | 10% |
| 34 | 2.3 | **慢病档案服务** | 43d | 2024-07-19 | 2024-08-30 | 23% |
| 35 |  | 慢病档案系统功能开发 | 13d | 2024-07-19 | 2024-07-31 | 100% |
| 36 |  | 慢病档案功能测试 | 10d | 2024-07-29 | 2024-08-07 | 80% |
| 37 |  | 医务人员用户管理功能开发 | 14d | 2024-07-31 | 2024-08-13 | 50% |
| 38 |  | 医务人员用户管理功能测试 | 5d | 2024-08-12 | 2024-08-16 |  |
| 39 |  | 与i信医对接慢病档案服务 | 17d | 2024-08-07 | 2024-08-23 |  |
| 40 |  | 与i信医对接慢病管理服务 | 13d | 2024-08-15 | 2024-08-27 |  |
| 41 |  | 测试与i信医对接 | 11d | 2024-08-20 | 2024-08-30 |  |
| 42 |  | 与急救中心对接患者档案服务 | 17d | 2024-08-07 | 2024-08-23 |  |
| 43 |  | 与急救中心对接患者诊疗服务 | 13d | 2024-08-15 | 2024-08-27 |  |
| 44 |  | 测试与急救中心对接 | 11d | 2024-08-20 | 2024-08-30 |  |
| 45 | 2.4 | **智慧安防** | 30d | 2024-08-01 | 2024-08-30 |  |
| 46 |  | 现场会演示点确认 | 30d | 2024-08-01 | 2024-08-30 |  |
| 47 | 3 | **互联网+护理&县域慢病管理** | 36d | 2024-07-26 | 2024-08-30 |  |
| 48 | 3.1 | **互联网+护理** | 16d | 2024-07-26 | 2024-08-10 |  |
| 49 |  | 费用回传HIS | 6d | 2024-07-26 | 2024-07-31 |  |
| 50 |  | 对接电子票据 | 3d | 2024-08-05 | 2024-08-07 |  |
| 51 |  | 全流程测试 | 3d | 2024-08-08 | 2024-08-10 |  |
| 52 | 3.2 | **县域慢病管理** | 33d | 2024-07-29 | 2024-08-30 |  |
| 53 |  | 添加就诊人新增乡/镇/街道 | 4d | 2024-07-29 | 2024-08-01 |  |
| 54 |  | 血压管理 | 9d | 2024-07-29 | 2024-08-06 |  |
| 55 |  | 血糖管理 | 9d | 2024-07-29 | 2024-08-06 |  |
| 56 |  | 体重管理 | 9d | 2024-07-29 | 2024-08-06 |  |
| 57 |  | 健康史上报 | 4d | 2024-08-05 | 2024-08-08 |  |
| 58 |  | 家庭医生问诊 | 4d | 2024-08-05 | 2024-08-08 |  |
| 59 |  | 居民端查看健康档案 | 4d | 2024-08-09 | 2024-08-12 |  |
| 60 |  | 健康宣教 | 4d | 2024-08-12 | 2024-08-15 |  |
| 61 |  | 智能随访 | 4d | 2024-08-15 | 2024-08-18 |  |
| 62 |  | 患者管理 | 3d | 2024-08-16 | 2024-08-18 |  |
| 63 |  | 患者分组 | 3d | 2024-08-16 | 2024-08-18 |  |
| 64 |  | 分级分标 | 3d | 2024-08-16 | 2024-08-18 |  |
| 65 |  | 危险预警&远程监测 | 2d | 2024-08-21 | 2024-08-22 |  |
| 66 |  | 发送群通知 | 2d | 2024-08-22 | 2024-08-23 |  |
| 67 |  | 邀请注册i信医 | 3d | 2024-08-22 | 2024-08-24 |  |
| 68 |  | 医生端查看健康档案 | 6d | 2024-08-16 | 2024-08-21 |  |
| 69 |  | 随访表单维护 | 7d | 2024-08-19 | 2024-08-25 |  |
| 70 |  | 患教文章维护 | 7d | 2024-08-19 | 2024-08-25 |  |
| 71 |  | 与数据底座对接 | 7d | 2024-08-19 | 2024-08-25 |  |

| ID | Task | Duration | Start | Finish |
| --- | --- | --- | --- | --- |
| 72 | 与HIS系统对接 | 7d | 2024-08-19 | 2024-08-25 |
| 73 | 全流程测试 | 3d | 2024-08-28 | 2024-08-30 |

## Version 2 (saved 2024-08-06)

Last finish stays 2024-08-31. Complete tasks 6 → 5.

Changed:

| ID | Task | Complete |
| --- | --- | --- |
| 19 | **医共体驾驶舱** | 50% → 48% |
| 21 | 医共体急救指标梳理 | 100% → 80% |

## Version 3 (saved 2024-08-06)

Last finish stays 2024-08-31. Complete tasks 5 → 7.

Changed:

| ID | Task | Complete |
| --- | --- | --- |
| 18 | **数据基座建设** | 31% → 32% |
| 19 | **医共体驾驶舱** | 48% → 55% |
| 21 | 医共体急救指标梳理 | 80% → 100% |
| 22 | 医共体指标计算逻辑 | 70% → 80% |
| 23 | 医共体驾驶舱交互设计 | 60% → 100% |

## Version 4 (saved 2024-08-06)

Last finish stays 2024-08-31. Complete tasks 7 → 6.

Changed:

| ID | Task | Complete |
| --- | --- | --- |
| 19 | **医共体驾驶舱** | 55% → 51% |
| 23 | 医共体驾驶舱交互设计 | 100% → 60% |

## Version 5 (saved 2024-08-06)

Last finish stays 2024-08-31. Complete tasks 6 → 7.

Changed:

| ID | Task | Complete |
| --- | --- | --- |
| 18 | **数据基座建设** | 32% → 33% |
| 19 | **医共体驾驶舱** | 51% → 55% |
| 23 | 医共体驾驶舱交互设计 | 60% → 100% |
| 27 | **慢病档案建立** | 42% → 44% |
| 31 | 病案系统数据清洗 | 50% → 60% |

## Version 6 (saved 2024-08-06)

Last finish stays 2024-08-31.

Changed:

| ID | Task | Complete |
| --- | --- | --- |
| 18 | **数据基座建设** | 33% → 32% |
| 27 | **慢病档案建立** | 44% → 42% |
| 31 | 病案系统数据清洗 | 60% → 50% |

## Version 7 (saved 2024-08-06)

Last finish stays 2024-08-31.

Changed:

| ID | Task | Complete |
| --- | --- | --- |
| 18 | **数据基座建设** | 32% → 33% |
| 27 | **慢病档案建立** | 42% → 44% |
| 31 | 病案系统数据清洗 | 50% → 60% |
