# 信宜市人民医院信息化建设

How a schedule from a web Gantt chart changed from version to version. A marks actual dates.

## Version 1 (saved 2024-08-09)

| ID | WBS | Task | Duration | Start | Finish | Complete |
| --- | --- | --- | --- | --- | --- | --- |
| 2 | 1 | **数据基座建设** | 46d | 2024-07-16 | 2024-08-30 | 39% |
| 3 | 1.1 | **医共体驾驶舱** | 27d | 2024-07-25 | 2024-08-20 | 70% |
| 4 |  | 茂名市健康平台统计指标梳理 | 7d | 2024-07-25 | 2024-07-31 | 100% |
| 5 |  | 医共体急救指标梳理 | 7d | 2024-07-31 | 2024-08-06 | 100% |
| 6 |  | 医共体指标计算逻辑 | 9d | 2024-08-01 | 2024-08-09 | 100% |
| 7 |  | 医共体驾驶舱交互设计 | 7d | 2024-08-01 | 2024-08-07 | 100% |
| 8 |  | 医共体驾驶舱视觉设计 | 7d | 2024-08-02 | 2024-08-08 | 80% |
| 9 |  | 茂名市平台指标数据爬取 | 16d | 2024-08-02 | 2024-08-17 | 50% |
| 10 |  | 医共体驾驶舱界面开发 | 13d | 2024-08-08 | 2024-08-20 | 20% |
| 11 | 1.2 | **慢病档案建立** | 46d | 2024-07-16 | 2024-08-30 | 45% |
| 12 |  | 省基卫数据清洗 | 4d | 2024-07-16 | 2024-07-19 | 100% |
| 13 |  | 省基卫数据入库 | 9d | 2024-07-18 | 2024-07-26 | 100% |
| 14 |  | 基层医生档案录入 | 9d | 2024-07-22 | 2024-07-30 | 100% |
| 15 |  | 病案系统数据清洗 | 12d | 2024-07-29 | 2024-08-09 | 70% |
| 16 |  | 病案系统数据入库 | 10d | 2024-08-07 | 2024-08-16 |  |
| 17 |  | i信医慢病管理数据接入 | 30d | 2024-08-01 | 2024-08-30 | 10% |
| 18 | 1.3 | **慢病档案服务** | 43d | 2024-07-19 | 2024-08-30 | 28% |
| 19 |  | 慢病档案系统功能开发 | 13d | 2024-07-19 | 2024-07-31 | 100% |
| 20 |  | 慢病档案功能测试 | 10d | 2024-07-29 | 2024-08-07 | 100% |
| 21 |  | 医务人员用户管理功能开发 | 14d | 2024-07-31 | 2024-08-13 | 60% |
| 22 |  | 医务人员用户管理功能测试 | 5d | 2024-08-12 | 2024-08-16 |  |
| 23 |  | 与i信医对接慢病档案服务 | 17d | 2024-08-07 | 2024-08-23 | 10% |
| 24 |  | 与i信医对接慢病管理服务 | 13d | 2024-08-15 | 2024-08-27 |  |
| 25 |  | 测试与i信医对接 | 11d | 2024-08-20 | 2024-08-30 |  |
| 26 |  | 与急救中心对接患者档案服务 | 17d | 2024-08-07 | 2024-08-23 | 10% |
| 27 |  | 与急救中心对接患者诊疗服务 | 13d | 2024-08-15 | 2024-08-27 |  |
| 28 |  | 测试与急救中心对接 | 11d | 2024-08-20 | 2024-08-30 |  |
| 29 | 1.4 | **智慧安防** | 30d | 2024-08-01 | 2024-08-30 |  |
| 30 |  | 现场会演示点确认 | 30d | 2024-08-01 | 2024-08-30 |  |

## Version 2 (saved 2024-08-09)

Last finish 2024-08-30 → 2024-08-31 (+1d).

Added:

| ID | Task | Duration | Start | Finish |
| --- | --- | --- | --- | --- |
| 2 | **医共体智慧急诊急救大平台项目实施计划** | 34d | 2024-07-29 | 2024-08-31 |
| 3 | 转诊系统平台的调整开发 | 16d | 2024-07-30 | 2024-08-14 |
| 4 | 预检分诊上线 | 21d | 2024-07-30 | 2024-08-19 |
| 5 | 统计看板、质控指标看板的配置 | 19d | 2024-08-05 | 2024-08-23 |
| 6 | 院内院外网络打通 | 1d | 2024-07-30 | 2024-07-30 |
| 7 | 设备采购及安装部署 | 10d | 2024-07-29 | 2024-08-07 |
| 8 | HIS接口对接 | 10d | 2024-07-30 | 2024-08-08 |
| 9 | 心电影像网络接口对接 | 5d | 2024-08-01 | 2024-08-05 |
| 10 | 120接口对接 | 15d | 2024-08-01 | 2024-08-15 |
| 11 | 2台急救车数字化改造 | 3d | 2024-08-19 | 2024-08-21 |
| 12 | 院内及急救车上医疗设备对接 | 5d | 2024-08-19 | 2024-08-23 |
| 13 | 系统配置及帐号授权开通 | 5d | 2024-08-08 | 2024-08-12 |
| 14 | 全业务流程测试 | 4d | 2024-08-23 | 2024-08-26 |
| 15 | 转诊转运培训：发文通知、线上培训 | 1d | 2024-08-27 | 2024-08-27 |
| 16 | 试点单位上线试运行 | 2d | 2024-08-28 | 2024-08-29 |
| 17 | 正式上线 | 1d | 2024-08-31 | 2024-08-31 |
| 47 | **互联网+护理&县域慢病管理** | 36d | 2024-07-26 | 2024-08-30 |
| 48 | **互联网+护理** | 16d | 2024-07-26 | 2024-08-10 |
| 49 | 费用回传HIS | 6d | 2024-07-26 | 2024-07-31 |
| 50 | 对接电子票据 | 3d | 2024-08-05 | 2024-08-07 |
| 51 | 全流程测试 | 3d | 2024-08-08 | 2024-08-10 |
| 52 | **县域慢病管理** | 33d | 2024-07-29 | 2024-08-30 |
| 53 | 添加就诊人新增乡/镇/街道 | 4d | 2024-07-29 | 2024-08-01 |
| 54 | 血压管理 | 9d | 2024-07-29 | 2024-08-06 |
| 55 | 血糖管理 | 9d | 2024-07-29 | 2024-08-06 |
| 56 | 体重管理 | 9d | 2024-07-29 | 2024-08-06 |
| 57 | 健康史上报 | 4d | 2024-08-05 | 2024-08-08 |
| 58 | 家庭医生问诊 | 4d | 2024-08-05 | 2024-08-08 |
| 59 | 居民端查看健康档案 | 4d | 2024-08-09 | 2024-08-12 |
| 60 | 健康宣教 | 4d | 2024-08-12 | 2024-08-15 |
| 61 | 智能随访 | 4d | 2024-08-15 | 2024-08-18 |
| 62 | 患者管理 | 3d | 2024-08-16 | 2024-08-18 |
| 63 | 患者分组 | 3d | 2024-08-16 | 2024-08-18 |
| 64 | 分级分标 | 3d | 2024-08-16 | 2024-08-18 |
| 65 | 危险预警&远程监测 | 2d | 2024-08-21 | 2024-08-22 |
| 66 | 发送群通知 | 2d | 2024-08-22 | 2024-08-23 |
| 67 | 邀请注册i信医 | 3d | 2024-08-22 | 2024-08-24 |
| 68 | 医生端查看健康档案 | 6d | 2024-08-16 | 2024-08-21 |
| 69 | 随访表单维护 | 7d | 2024-08-19 | 2024-08-25 |
| 70 | 患教文章维护 | 7d | 2024-08-19 | 2024-08-25 |
| 71 | 与数据底座对接 | 7d | 2024-08-19 | 2024-08-25 |
| 72 | 与HIS系统对接 | 7d | 2024-08-19 | 2024-08-25 |
| 73 | 全流程测试 | 3d | 2024-08-28 | 2024-08-30 |

## Version 3 (saved 2024-08-09)

Last finish 2024-08-31 → 2024-08-30 (-1d).

Removed: 2 医共体智慧急诊急救大平台项目实施计划; 3 转诊系统平台的调整开发; 4 预检分诊上线; 5 统计看板、质控指标看板的配置; 6 院内院外网络打通; 7 设备采购及安装部署; 8 HIS接口对接; 9 心电影像网络接口对接; 10 120接口对接; 11 2台急救车数字化改造; 12 院内及急救车上医疗设备对接; 13 系统配置及帐号授权开通; 14 全业务流程测试; 15 转诊转运培训：发文通知、线上培训; 16 试点单位上线试运行; 17 正式上线

## Version 4 (saved 2024-08-09)

Last finish stays 2024-08-30.

Removed: 31 互联网+护理&县域慢病管理; 32 互联网+护理; 33 费用回传HIS; 34 对接电子票据; 35 全流程测试; 36 县域慢病管理; 37 添加就诊人新增乡/镇/街道; 38 血压管理; 39 血糖管理; 40 体重管理; 41 健康史上报; 42 家庭医生问诊; 43 居民端查看健康档案; 44 健康宣教; 45 智能随访; 46 患者管理; 47 患者分组; 48 分级分标; 49 危险预警&远程监测; 50 发送群通知; 51 邀请注册i信医; 52 医生端查看健康档案; 53 随访表单维护; 54 患教文章维护; 55 与数据底座对接; 56 与HIS系统对接; 57 全流程测试

## Version 5 (saved 2024-08-09)

Last finish stays 2024-08-30.

Changed:

| ID | Task | Complete |
| --- | --- | --- |
| 18 | **慢病档案服务** | 28% → 29% |
| 21 | 医务人员用户管理功能开发 | 60% → 70% |
