# 信宜市人民医院信息化建设

How a schedule from a web Gantt chart changed from version to version. A marks actual dates.

## Version 1 (saved 2024-08-14)

| ID | WBS | Task | Duration | Start | Finish | Complete |
| --- | --- | --- | --- | --- | --- | --- |
| 2 | 1 | **数据基座建设** | 46d | 2024-07-16 | 2024-08-30 | 43% |
| 3 | 1.1 | **医共体驾驶舱** | 27d | 2024-07-25 | 2024-08-20 | 84% |
| 4 |  | 茂名市健康平台统计指标梳理 | 7d | 2024-07-25 | 2024-07-31 | 100% |
| 5 |  | 医共体急救指标梳理 | 7d | 2024-07-31 | 2024-08-06 | 100% |
| 6 |  | 医共体指标计算逻辑 | 9d | 2024-08-01 | 2024-08-09 | 100% |
| 7 |  | 医共体驾驶舱交互设计 | 7d | 2024-08-01 | 2024-08-07 | 100% |
| 8 |  | 医共体驾驶舱视觉设计 | 7d | 2024-08-02 | 2024-08-08 | 100% |
| 9 |  | 茂名市平台指标数据爬取 | 16d | 2024-08-02 | 2024-08-17 | 100% |
| 10 |  | 医共体驾驶舱界面开发 | 13d | 2024-08-08 | 2024-08-20 | 20% |
| 11 | 1.2 | **慢病档案建立** | 46d | 2024-07-16 | 2024-08-30 | 45% |
| 12 |  | 省基卫数据清洗 | 4d | 2024-07-16 | 2024-07-19 | 100% |
| 13 |  | 省基卫数据入库 | 9d | 2024-07-18 | 2024-07-26 | 100% |
| 14 |  | 基层医生档案录入 | 9d | 2024-07-22 | 2024-07-30 | 100% |
| 15 |  | 病案系统数据清洗 | 12d | 2024-07-29 | 2024-08-09 | 70% |
| 16 |  | 病案系统数据入库 | 10d | 2024-08-07 | 2024-08-16 |  |
| 17 |  | i信医慢病管理数据接入 | 30d | 2024-08-01 | 2024-08-30 | 10% |
| 18 | 1.3 | **慢病档案服务** | 43d | 2024-07-19 | 2024-08-30 | 29% |
| 19 |  | 慢病档案系统功能开发 | 13d | 2024-07-19 | 2024-07-31 | 100% |
| 20 |  | 慢病档案功能测试 | 10d | 2024-07-29 | 2024-08-07 | 100% |
| 21 |  | 医务人员用户管理功能开发 | 14d | 2024-07-31 | 2024-08-13 | 70% |
| 22 |  | 医务人员用户管理功能测试 | 5d | 2024-08-12 | 2024-08-16 |  |
| 23 |  | 与i信医对接慢病档案服务 | 17d | 2024-08-07 | 2024-08-23 | 10% |
| 24 |  | 与i信医对接慢病管理服务 | 13d | 2024-08-15 | 2024-08-27 |  |
| 25 |  | 测试与i信医对接 | 11d | 2024-08-20 | 2024-08-30 |  |
| 26 |  | 与急救中心对接患者档案服务 | 17d | 2024-08-07 | 2024-08-23 | 10% |
| 27 |  | 与急救中心对接患者诊疗服务 | 13d | 2024-08-15 | 2024-08-27 |  |
| 28 |  | 测试与急救中心对接 | 11d | 2024-08-20 | 2024-08-30 |  |
| 29 | 1.4 | **智慧安防** | 30d | 2024-08-01 | 2024-08-30 |  |
| 30 |  | 现场会演示点确认 | 30d | 2024-08-01 | 2024-08-30 |  |

## Version 2 (saved 2024-08-14)

Last finish stays 2024-08-30. Complete tasks 11 → 9.

Changed:

| ID | Task | Complete |
| --- | --- | --- |
| 2 | **数据基座建设** | 43% → 39% |
| 3 | **医共体驾驶舱** | 84% → 70% |
| 8 | 医共体驾驶舱视觉设计 | 100% → 80% |
| 9 | 茂名市平台指标数据爬取 | 100% → 50% |

## Version 3 (saved 2024-08-14)

Last finish stays 2024-08-30. Complete tasks 9 → 13.

Changed:

| ID | Task | Complete |
| --- | --- | --- |
| 2 | **数据基座建设** | 39% → 53% |
| 3 | **医共体驾驶舱** | 70% → 94% |
| 8 | 医共体驾驶舱视觉设计 | 80% → 100% |
| 9 | 茂名市平台指标数据爬取 | 50% → 100% |
| 10 | 医共体驾驶舱界面开发 | 20% → 70% |
| 11 | **慢病档案建立** | 45% → 49% |
| 17 | i信医慢病管理数据接入 | 10% → 20% |
| 18 | **慢病档案服务** | 29% → 38% |
| 21 | 医务人员用户管理功能开发 | 70% → 100% |
| 22 | 医务人员用户管理功能测试 | 0% → 100% |
| 23 | 与i信医对接慢病档案服务 | 10% → 20% |
| 29 | **智慧安防** | 0% → 30% |
| 30 | 现场会演示点确认 | 0% → 30% |

## Version 4 (saved 2024-08-14)

Last finish stays 2024-08-30. Complete tasks 13 → 12.

Changed:

| ID | Task | Complete |
| --- | --- | --- |
| 2 | **数据基座建设** | 53% → 47% |
| 18 | **慢病档案服务** | 38% → 33% |
| 22 | 医务人员用户管理功能测试 | 100% → 0% |
| 23 | 与i信医对接慢病档案服务 | 20% → 10% |
| 29 | **智慧安防** | 30% → 0% |
| 30 | 现场会演示点确认 | 30% → 0% |

## Version 5 (saved 2024-08-14)

Last finish stays 2024-08-30. Complete tasks 12 → 13.

Changed:

| ID | Task | Complete |
| --- | --- | --- |
| 2 | **数据基座建设** | 47% → 49% |
| 18 | **慢病档案服务** | 33% → 37% |
| 22 | 医务人员用户管理功能测试 | 0% → 100% |

## Version 6 (saved 2024-08-14)

Last finish stays 2024-08-30. Complete tasks 13 → 11.

Changed:

| ID | Task | Complete |
| --- | --- | --- |
| 2 | **数据基座建设** | 49% → 45% |
| 11 | **慢病档案建立** | 49% → 45% |
| 17 | i信医慢病管理数据接入 | 20% → 10% |
| 18 | **慢病档案服务** | 37% → 29% |
| 21 | 医务人员用户管理功能开发 | 100% → 70% |
| 22 | 医务人员用户管理功能测试 | 100% → 0% |
