# 慢病档案管理

How a schedule from a web Gantt chart changed from version to version. A marks actual dates.

## Version 1 (saved 2024-07-25)

| ID | WBS | Task | Duration | Start | Finish | Complete |
| --- | --- | --- | --- | --- | --- | --- |
| 2 | 1 | **慢病档案建立** | 45d | 2024-07-16 | 2024-09-16 | 2% |
| 3 |  | 省基卫数据清洗 | 4d | 2024-07-16 | 2024-07-19 | 30% |
| 4 |  | 省基卫数据入库 | 5d | 2024-07-18 | 2024-07-24 |  |
| 5 |  | 病案系统数据清洗 | 5d | 2024-07-22 | 2024-07-26 |  |
| 6 |  | 病案系统数据入库 | 5d | 2024-07-25 | 2024-07-31 |  |
| 7 |  | 基层医生档案录入 | 8d | 2024-07-29 | 2024-08-07 |  |
| 8 |  | i信医慢病管理数据接入 | 33d | 2024-08-01 | 2024-09-16 |  |
| 9 | 2 | **慢病档案服务** | 42d | 2024-07-19 | 2024-09-16 |  |
| 10 |  | 主索引系统功能开发 | 9d | 2024-07-19 | 2024-07-31 |  |
| 11 |  | 主索引系统功能测试 | 5d | 2024-07-29 | 2024-08-02 |  |
| 12 |  | 医务人员用户管理功能开发 | 7d | 2024-07-31 | 2024-08-08 |  |
| 13 |  | 医务人员用户管理功能测试 | 4d | 2024-08-07 | 2024-08-12 |  |
| 14 |  | 与i信医对接慢病档案服务 | 16d | 2024-08-05 | 2024-08-26 |  |
| 15 |  | 与i信医对接慢病管理服务 | 16d | 2024-08-26 | 2024-09-16 |  |
| 16 |  | 测试i信医对接 | 20d | 2024-08-20 | 2024-09-16 |  |

## Version 2 (saved 2024-07-25)

Last finish 2024-09-16 → 2024-08-30 (-17d).

Added:

| ID | Task | Duration | Start | Finish |
| --- | --- | --- | --- | --- |
| 2 | **医共体驾驶舱** | 10d | 2024-07-25 | 2024-08-07 |
| 3 | 茂名市健康平台统计指标梳理 | 3d | 2024-07-25 | 2024-07-29 |
| 4 | 医共体运行指标计算 | 3d | 2024-07-29 | 2024-07-31 |
| 5 | 医共体驾驶舱系统交互稿设计 | 3d | 2024-07-25 | 2024-07-29 |
| 6 | 医共体驾驶舱系统功能 | 8d | 2024-07-29 | 2024-08-07 |

Changed:

| ID | Task | Start | Finish | Duration |
| --- | --- | --- | --- | --- |
| 7 | **慢病档案建立** |  | 2024-09-16 → 2024-08-30 (-17d) | 45d → 34d |
| 9 | 省基卫数据入库 |  | 2024-07-24 → 2024-07-26 (+2d) | 5d → 7d |
| 10 | 病案系统数据清洗 |  | 2024-07-26 → 2024-07-30 (+4d) | 5d → 7d |
| 11 | 病案系统数据入库 | 2024-07-25 → 2024-07-29 (+4d) | 2024-07-31 → 2024-08-07 (+7d) | 5d → 8d |
| 12 | 基层医生档案录入 | 2024-07-29 → 2024-08-01 (+3d) | 2024-08-07 → 2024-08-09 (+2d) | 8d → 7d |
| 13 | i信医慢病管理数据接入 |  | 2024-09-16 → 2024-08-30 (-17d) | 33d → 22d |
| 14 | **慢病档案服务** |  | 2024-09-16 → 2024-08-30 (-17d) | 42d → 31d |
| 16 | 主索引系统功能测试 |  | 2024-08-02 → 2024-08-07 (+5d) | 5d → 8d |
| 17 | 医务人员用户管理功能开发 |  | 2024-08-08 → 2024-08-13 (+5d) | 7d → 10d |
| 18 | 医务人员用户管理功能测试 | 2024-08-07 → 2024-08-12 (+5d) | 2024-08-12 → 2024-08-16 (+4d) | 4d → 5d |
| 20 | 与i信医对接慢病管理服务 | 2024-08-26 → 2024-08-19 (-7d) | 2024-09-16 → 2024-08-29 (-18d) | 16d → 9d |
| 21 | 测试i信医对接 |  | 2024-09-16 → 2024-08-30 (-17d) | 20d → 9d |
