# 信宜市人民医院信息化建设

How a schedule from a web Gantt chart changed from version to version. A marks actual dates.

## Version 1 (saved 2024-07-31)

| ID | WBS | Task | Duration | Start | Finish | Complete |
| --- | --- | --- | --- | --- | --- | --- |
| 2 | 1 | **医共体智慧急诊急救大平台项目实施计划** | 34d | 2024-07-29 | 2024-08-31 | 9% |
| 3 |  | 转诊系统平台的调整开发 | 16d | 2024-07-30 | 2024-08-14 | 5% |
| 4 |  | 预检分诊上线 | 21d | 2024-07-30 | 2024-08-19 | 30% |
| 5 |  | 统计看板、质控指标看板的配置 | 19d | 2024-08-05 | 2024-08-23 |  |
| 6 |  | 院内院外网络打通 | 1d | 2024-07-30 | 2024-07-30 |  |
| 7 |  | 设备采购及安装部署 | 10d | 2024-07-29 | 2024-08-07 | 10% |
| 8 |  | HIS接口对接 | 10d | 2024-07-30 | 2024-08-08 | 10% |
| 9 |  | 心电影像网络接口对接 | 5d | 2024-08-01 | 2024-08-05 | 10% |
| 10 |  | 120接口对接 | 15d | 2024-08-01 | 2024-08-15 | 5% |
| 11 |  | 2台急救车数字化改造 | 3d | 2024-08-19 | 2024-08-21 |  |
| 12 |  | 院内及急救车上医疗设备对接 | 5d | 2024-08-19 | 2024-08-23 |  |
| 13 |  | 系统配置及帐号授权开通 | 5d | 2024-08-08 | 2024-08-12 | 10% |
| 14 |  | 全业务流程测试 | 4d | 2024-08-23 | 2024-08-26 |  |
| 15 |  | 转诊转运培训：发文通知、线上培训 | 1d | 2024-08-27 | 2024-08-27 |  |
| 16 |  | 试点单位上线试运行 | 2d | 2024-08-28 | 2024-08-29 |  |
| 17 |  | 正式上线 | 1d | 2024-08-31 | 2024-08-31 |  |
| 18 | 2 | **数据基座建设** | 46d | 2024-07-16 | 2024-08-30 |  |
| 19 | 2.1 | **医共体驾驶舱** | 27d | 2024-07-25 | 2024-08-20 |  |
| 20 |  | 茂名市健康平台统计指标梳理 | 7d | 2024-07-25 | 2024-07-31 |  |
| 21 |  | 医共体急救指标梳理 | 7d | 2024-07-31 | 2024-08-06 |  |
| 22 |  | 医共体指标计算逻辑 | 9d | 2024-08-01 | 2024-08-09 |  |
| 23 |  | 医共体驾驶舱交互设计 | 7d | 2024-08-01 | 2024-08-07 |  |
| 24 |  | 医共体驾驶舱视觉设计 | 7d | 2024-08-02 | 2024-08-08 |  |
| 25 |  | 茂名市平台指标数据爬取 | 16d | 2024-08-02 | 2024-08-17 |  |
| 26 |  | 医共体驾驶舱界面开发 | 13d | 2024-08-08 | 2024-08-20 |  |
| 27 | 2.2 | **慢病档案建立** | 46d | 2024-07-16 | 2024-08-30 |  |
| 28 |  | 省基卫数据清洗 | 4d | 2024-07-16 | 2024-07-19 |  |
| 29 |  | 省基卫数据入库 | 9d | 2024-07-18 | 2024-07-26 |  |
| 30 |  | 基层医生档案录入 | 9d | 2024-07-22 | 2024-07-30 |  |
| 31 |  | 病案系统数据清洗 | 12d | 2024-07-29 | 2024-08-09 |  |
| 32 |  | 病案系统数据入库 | 10d | 2024-08-07 | 2024-08-16 |  |
| 33 |  | i信医慢病管理数据接入 | 30d | 2024-08-01 | 2024-08-30 |  |
| 34 | 2.3 | **慢病档案服务** | 43d | 2024-07-19 | 2024-08-30 |  |
| 35 |  | 慢病档案系统功能开发 | 13d | 2024-07-19 | 2024-07-31 |  |
| 36 |  | 慢病档案功能测试 | 10d | 2024-07-29 | 2024-08-07 |  |
| 37 |  | 医务人员用户管理功能开发 | 14d | 2024-07-31 | 2024-08-13 |  |
| 38 |  | 医务人员用户管理功能测试 | 5d | 2024-08-12 | 2024-08-16 |  |
| 39 |  | 与i信医、急救中心对接慢病档案服务 | 17d | 2024-08-07 | 2024-08-23 |  |
| 40 |  | 与i信医对接慢病管理服务 | 13d | 2024-08-15 | 2024-08-27 |  |
| 41 |  | 测试与i信医、急救中心对接 | 11d | 2024-08-20 | 2024-08-30 |  |
| 42 | 2.4 | **智慧安防** | 30d | 2024-08-01 | 2024-08-30 |  |
| 43 |  | 现场会演示点确认 | 30d | 2024-08-01 | 2024-08-30 |  |
| 44 | 3 | **互联网+护理&县域慢病管理** | 36d | 2024-07-26 | 2024-08-30 |  |
| 45 | 3.1 | **互联网+护理** | 16d | 2024-07-26 | 2024-08-10 |  |
| 46 |  | 费用回传HIS | 6d | 2024-07-26 | 2024-07-31 |  |
| 47 |  | 对接电子票据 | 3d | 2024-08-05 | 2024-08-07 |  |
| 48 |  | 全流程测试 | 3d | 2024-08-08 | 2024-08-10 |  |
| 49 | 3.2 | **县域慢病管理** | 33d | 2024-07-29 | 2024-08-30 |  |
| 50 |  | 添加就诊人新增乡/镇/街道 | 4d | 2024-07-29 | 2024-08-01 |  |
| 51 |  | 血压管理 | 9d | 2024-07-29 | 2024-08-06 |  |
| 52 |  | 血糖管理 | 9d | 2024-07-29 | 2024-08-06 |  |
| 53 |  | 体重管理 | 9d | 2024-07-29 | 2024-08-06 |  |
| 54 |  | 健康史上报 | 4d | 2024-08-05 | 2024-08-08 |  |
| 55 |  | 家庭医生问诊 | 4d | 2024-08-05 | 2024-08-08 |  |
| 56 |  | 居民端查看健康档案 | 4d | 2024-08-09 | 2024-08-12 |  |
| 57 |  | 健康宣教 | 4d | 2024-08-12 | 2024-08-15 |  |
| 58 |  | 智能随访 | 4d | 2024-08-15 | 2024-08-18 |  |
| 59 |  | 患者管理 | 3d | 2024-08-16 | 2024-08-18 |  |
| 60 |  | 患者分组 | 3d | 2024-08-16 | 2024-08-18 |  |
| 61 |  | 分级分标 | 3d | 2024-08-16 | 2024-08-18 |  |
| 62 |  | 危险预警&远程监测 | 2d | 2024-08-21 | 2024-08-22 |  |
| 63 |  | 发送群通知 | 2d | 2024-08-22 | 2024-08-23 |  |
| 64 |  | 邀请注册i信医 | 3d | 2024-08-22 | 2024-08-24 |  |
| 65 |  | 医生端查看健康档案 | 6d | 2024-08-16 | 2024-08-21 |  |
| 66 |  | 随访表单维护 | 7d | 2024-08-19 | 2024-08-25 |  |
| 67 |  | 患教文章维护 | 7d | 2024-08-19 | 2024-08-25 |  |
| 68 |  | 与数据底座对接 | 7d | 2024-08-19 | 2024-08-25 |  |
| 69 |  | 与HIS系统对接 | 7d | 2024-08-19 | 2024-08-25 |  |
| 70 |  | 全流程测试 | 3d | 2024-08-28 | 2024-08-30 |  |

## Version 2 (saved 2024-07-31)

Last finish stays 2024-08-31. Complete tasks 0 → 5.

Added:

| ID | Task | Duration | Start | Finish |
| --- | --- | --- | --- | --- |
| 39 | 与i信医对接慢病档案服务 | 17d | 2024-08-07 | 2024-08-23 |
| 41 | 测试与i信医对接 | 11d | 2024-08-20 | 2024-08-30 |
| 42 | 与急救中心对接患者档案服务 | 17d | 2024-08-07 | 2024-08-23 |
| 43 | 与急救中心对接患者诊疗服务 | 13d | 2024-08-15 | 2024-08-27 |
| 44 | 测试与急救中心对接 | 11d | 2024-08-20 | 2024-08-30 |

Removed: 39 与i信医、急救中心对接慢病档案服务; 41 测试与i信医、急救中心对接

Changed:

| ID | Task | Complete |
| --- | --- | --- |
| 18 | **数据基座建设** | 0% → 17% |
| 19 | **医共体驾驶舱** | 0% → 21% |
| 20 | 茂名市健康平台统计指标梳理 | 0% → 100% |
| 21 | 医共体急救指标梳理 | 0% → 10% |
| 22 | 医共体指标计算逻辑 | 0% → 70% |
| 27 | **慢病档案建立** | 0% → 31% |
| 28 | 省基卫数据清洗 | 0% → 100% |
| 29 | 省基卫数据入库 | 0% → 100% |
| 30 | 基层医生档案录入 | 0% → 100% |
| 31 | 病案系统数据清洗 | 0% → 10% |
| 34 | **慢病档案服务** | 0% → 10% |
| 35 | 慢病档案系统功能开发 | 0% → 100% |
